# Babcock Building A Build Out - RFCSP-226-05-082-CNST

How a schedule from MS Project XML changed from version to version. A marks actual dates.

## Version 1 (saved 2026-07-24)

Note of the change: Add Babcock Building A Build Out proposal schedule (RFCSP-226-05-082-CNST)

| ID | WBS | Task | Duration | Start | Finish | Predecessors | Total float |
| --- | --- | --- | --- | --- | --- | --- | --- |
| 1 | 1 | **Babcock Building A Build Out - RFCSP-226-05-082-CNST** | 123d | 2026-08-03 | 2027-01-28 |  |  |
| 2 | 1.1 | **Preconstruction** | 49d | 2026-08-03 | 2026-10-09 |  |  |
| 3 |  | NTP | 1d | 2026-08-03 | 2026-08-03 |  |  |
| 4 |  | Contract Award & Execution | 1d | 2026-08-04 | 2026-08-04 | 3 |  |
| 5 |  | Payment & Performance Bonds / Builder's Risk & Insurance | 5d | 2026-08-04 | 2026-08-10 | 4SS | 11d |
| 6 |  | Pre-Construction Meeting - Owner / A/E / Triun | 1d | 2026-08-05 | 2026-08-05 | 4 | 14d |
| 7 |  | Preconstruction Submittals - SOV, Baseline Schedule, Safety Plan & Submittal Register | 5d | 2026-08-05 | 2026-08-11 | 4 | 10d |
| 8 |  | Building & Trade Permits - Application to Issuance (AHJ) | 15d | 2026-08-05 | 2026-08-25 | 4 |  |
| 9 | 1.1.7 | **Submittals** | 47d | 2026-08-05 | 2026-10-09 |  | 12d |
| 10 | 1.1.7.1 | **23 - HVAC Equipment (AHUs/RTUs, VAV Boxes, Fans & Grilles)** | 47d | 2026-08-05 | 2026-10-09 |  | 41d |
| 11 |  | Triun Review | 1d | 2026-08-05 | 2026-08-05 | 4 | 41d |
| 12 |  | A/E Review | 5d | 2026-08-06 | 2026-08-12 | 11 | 41d |
| 13 |  | Approved Submittal | 1d | 2026-08-13 | 2026-08-13 | 12 | 41d |
| 14 |  | Procurement | 40d | 2026-08-14 | 2026-10-09 | 13 | 41d |
| 15 | 1.1.7.2 | **26 - Electrical Distribution (Panelboards, Transformers & Disconnects)** | 47d | 2026-08-05 | 2026-10-09 |  | 27d |
| 16 |  | Triun Review | 1d | 2026-08-05 | 2026-08-05 | 4 | 27d |
| 17 |  | A/E Review | 5d | 2026-08-06 | 2026-08-12 | 16 | 27d |
| 18 |  | Approved Submittal | 1d | 2026-08-13 | 2026-08-13 | 17 | 27d |
| 19 |  | Procurement | 40d | 2026-08-14 | 2026-10-09 | 18 | 27d |
| 20 | 1.1.7.3 | **08 - Doors, Frames & Hardware (Schedules & Product Data)** | 37d | 2026-08-05 | 2026-09-25 |  | 22d |
| 21 |  | Triun Review | 1d | 2026-08-05 | 2026-08-05 | 4 | 22d |
| 22 |  | A/E Review | 5d | 2026-08-06 | 2026-08-12 | 21 | 22d |
| 23 |  | Approved Submittal | 1d | 2026-08-13 | 2026-08-13 | 22 | 22d |
| 24 |  | Procurement | 30d | 2026-08-14 | 2026-09-25 | 23 | 22d |
| 25 | 1.1.7.4 | **26 - Lighting Fixtures & Lighting Controls** | 37d | 2026-08-06 | 2026-09-28 |  | 52d |
| 26 |  | Triun Review | 1d | 2026-08-06 | 2026-08-06 | 4FS+1d | 52d |
| 27 |  | A/E Review | 5d | 2026-08-07 | 2026-08-13 | 26 | 52d |
| 28 |  | Approved Submittal | 1d | 2026-08-14 | 2026-08-14 | 27 | 52d |
| 29 |  | Procurement | 30d | 2026-08-17 | 2026-09-28 | 28 | 52d |
| 30 | 1.1.7.5 | **08 - Aluminum Storefront & Interior Glazing (Shop Drawings)** | 32d | 2026-08-06 | 2026-09-21 |  | 69d |
| 31 |  | Triun Review | 1d | 2026-08-06 | 2026-08-06 | 4FS+1d | 69d |
| 32 |  | A/E Review | 5d | 2026-08-07 | 2026-08-13 | 31 | 69d |
| 33 |  | Approved Submittal | 1d | 2026-08-14 | 2026-08-14 | 32 | 69d |
| 34 |  | Procurement | 25d | 2026-08-17 | 2026-09-21 | 33 | 69d |
| 35 | 1.1.7.6 | **06 - Architectural Millwork & Casework (Shop Drawings)** | 32d | 2026-08-07 | 2026-09-22 |  | 65d |
| 36 |  | Triun Review | 1d | 2026-08-07 | 2026-08-07 | 4FS+2d | 65d |
| 37 |  | A/E Review | 5d | 2026-08-10 | 2026-08-14 | 36 | 65d |
| 38 |  | Approved Submittal | 1d | 2026-08-17 | 2026-08-17 | 37 | 65d |
| 39 |  | Procurement | 25d | 2026-08-18 | 2026-09-22 | 38 | 65d |
| 40 | 1.1.7.7 | **23/25 - HVAC Controls / Building Automation** | 27d | 2026-08-07 | 2026-09-15 |  | 64d |
| 41 |  | Triun Review | 1d | 2026-08-07 | 2026-08-07 | 4FS+2d | 64d |
| 42 |  | A/E Review | 5d | 2026-08-10 | 2026-08-14 | 41 | 64d |
| 43 |  | Approved Submittal | 1d | 2026-08-17 | 2026-08-17 | 42 | 64d |
| 44 |  | Procurement | 20d | 2026-08-18 | 2026-09-15 | 43 | 64d |
| 45 | 1.1.7.8 | **28 - Fire Alarm & Security / Access Control (incl. AHJ Fire Alarm Permit)** | 27d | 2026-08-07 | 2026-09-15 |  | 73d |
| 46 |  | Triun Review | 1d | 2026-08-07 | 2026-08-07 | 4FS+2d | 73d |
| 47 |  | A/E Review | 5d | 2026-08-10 | 2026-08-14 | 46 | 73d |
| 48 |  | Approved Submittal | 1d | 2026-08-17 | 2026-08-17 | 47 | 73d |
| 49 |  | Procurement | 20d | 2026-08-18 | 2026-09-15 | 48 | 73d |
| 50 | 1.1.7.9 | **05 - Miscellaneous Metals & Equipment Support Steel (Shop Drawings)** | 22d | 2026-08-10 | 2026-09-09 |  | 60d |
| 51 |  | Triun Review | 1d | 2026-08-10 | 2026-08-10 | 4FS+3d | 60d |
| 52 |  | A/E Review | 5d | 2026-08-11 | 2026-08-17 | 51 | 60d |
| 53 |  | Approved Submittal | 1d | 2026-08-18 | 2026-08-18 | 52 | 60d |
| 54 |  | Procurement | 15d | 2026-08-19 | 2026-09-09 | 53 | 60d |
| 55 | 1.1.7.10 | **22 - Plumbing Fixtures, Piping & Insulation** | 22d | 2026-08-10 | 2026-09-09 |  | 37d |
| 56 |  | Triun Review | 1d | 2026-08-10 | 2026-08-10 | 4FS+3d | 37d |
| 57 |  | A/E Review | 5d | 2026-08-11 | 2026-08-17 | 56 | 37d |
| 58 |  | Approved Submittal | 1d | 2026-08-18 | 2026-08-18 | 57 | 37d |
| 59 |  | Procurement | 15d | 2026-08-19 | 2026-09-09 | 58 | 37d |
| 60 | 1.1.7.11 | **09 - Interior Finishes (Flooring, Tile, ACT & Paint)** | 22d | 2026-08-11 | 2026-09-10 |  | 68d |
| 61 |  | Triun Review | 1d | 2026-08-11 | 2026-08-11 | 4FS+4d | 68d |
| 62 |  | A/E Review | 5d | 2026-08-12 | 2026-08-18 | 61 | 68d |
| 63 |  | Approved Submittal | 1d | 2026-08-19 | 2026-08-19 | 62 | 68d |
| 64 |  | Procurement | 15d | 2026-08-20 | 2026-09-10 | 63 | 68d |
| 65 | 1.1.7.12 | **10/11/12 - Specialties, Equipment & Window Treatments** | 22d | 2026-08-11 | 2026-09-10 |  | 80d |
| 66 |  | Triun Review | 1d | 2026-08-11 | 2026-08-11 | 4FS+4d | 80d |
| 67 |  | A/E Review | 5d | 2026-08-12 | 2026-08-18 | 66 | 80d |
| 68 |  | Approved Submittal | 1d | 2026-08-19 | 2026-08-19 | 67 | 80d |
| 69 |  | Procurement | 15d | 2026-08-20 | 2026-09-10 | 68 | 80d |
| 70 | 1.1.7.13 | **27 - Structured Cabling & Communications** | 22d | 2026-08-12 | 2026-09-11 |  | 59d |

| ID | WBS | Task | Duration | Start | Finish | Predecessors | Total float |
| --- | --- | --- | --- | --- | --- | --- | --- |
| 71 |  | Triun Review | 1d | 2026-08-12 | 2026-08-12 | 4FS+5d | 59d |
| 72 |  | A/E Review | 5d | 2026-08-13 | 2026-08-19 | 71 | 59d |
| 73 |  | Approved Submittal | 1d | 2026-08-20 | 2026-08-20 | 72 | 59d |
| 74 |  | Procurement | 15d | 2026-08-21 | 2026-09-11 | 73 | 59d |
| 75 | 1.1.7.14 | **07 - Roofing Patching, Firestopping & Joint Sealants** | 17d | 2026-08-12 | 2026-09-03 |  | 68d |
| 76 |  | Triun Review | 1d | 2026-08-12 | 2026-08-12 | 4FS+5d | 68d |
| 77 |  | A/E Review | 5d | 2026-08-13 | 2026-08-19 | 76 | 68d |
| 78 |  | Approved Submittal | 1d | 2026-08-20 | 2026-08-20 | 77 | 68d |
| 79 |  | Procurement | 10d | 2026-08-21 | 2026-09-03 | 78 | 68d |
| 80 | 1.1.7.15 | **03 - Concrete Mix Design (4,000 PSI)** | 12d | 2026-08-13 | 2026-08-28 |  | 52d |
| 81 |  | Triun Review | 1d | 2026-08-13 | 2026-08-13 | 4FS+6d | 52d |
| 82 |  | A/E Review | 5d | 2026-08-14 | 2026-08-20 | 81 | 52d |
| 83 |  | Approved Submittal | 1d | 2026-08-21 | 2026-08-21 | 82 | 52d |
| 84 |  | Procurement | 5d | 2026-08-24 | 2026-08-28 | 83 | 52d |
| 85 | 1.1.7.16 | **04 - Masonry Materials (CMU, Mortar & Grout)** | 12d | 2026-08-13 | 2026-08-28 |  | 41d |
| 86 |  | Triun Review | 1d | 2026-08-13 | 2026-08-13 | 4FS+6d | 41d |
| 87 |  | A/E Review | 5d | 2026-08-14 | 2026-08-20 | 86 | 41d |
| 88 |  | Approved Submittal | 1d | 2026-08-21 | 2026-08-21 | 87 | 41d |
| 89 |  | Procurement | 5d | 2026-08-24 | 2026-08-28 | 88 | 41d |
| 90 | 1.1.7.17 | **02 - Demolition Plan, Waste Management & Haul Routes** | 10d | 2026-08-05 | 2026-08-18 |  | 12d |
| 91 |  | Triun Review | 1d | 2026-08-05 | 2026-08-05 | 4 | 12d |
| 92 |  | A/E Review | 5d | 2026-08-06 | 2026-08-12 | 91 | 12d |
| 93 |  | Approved Submittal | 1d | 2026-08-13 | 2026-08-13 | 92 | 12d |
| 94 |  | Procurement | 3d | 2026-08-14 | 2026-08-18 | 93 | 12d |
| 95 | 1.2 | **Construction** | 105d | 2026-08-26 | 2027-01-27 |  |  |
| 96 | 1.2.1 | **Mobilization & Site Preparation** | 6d | 2026-08-26 | 2026-09-02 |  |  |
| 97 |  | Mobilize Field Office, Temporary Facilities & Site Protection | 3d | 2026-08-26 | 2026-08-28 | 6, 5, 8, 7 |  |
| 98 |  | Onsite Construction Start | 0d | 2026-08-26 | 2026-08-26 | 97SS | 1d |
| 99 |  | Temporary Power, Lighting & Ventilation | 3d | 2026-08-31 | 2026-09-02 | 97 | 1d |
| 100 |  | Install Dust Barriers, Floor Protection & Negative Air | 2d | 2026-08-31 | 2026-09-01 | 97 |  |
| 101 |  | Building Control Lines, Survey & Layout | 2d | 2026-08-31 | 2026-09-01 | 97 | 15d |
| 102 | 1.2.2 | **Selective Demolition (Division 02 - Existing Conditions)** | 15d | 2026-09-02 | 2026-09-23 |  |  |
| 103 |  | MEP Safe-Off, Disconnects & Cap-Offs | 2d | 2026-09-02 | 2026-09-03 | 100, 99SS+1d |  |
| 104 |  | Selective Interior Demolition - Walls, Ceilings, Flooring & Fixtures | 12d | 2026-09-04 | 2026-09-22 | 103, 94 |  |
| 105 |  | Demolish & Remove Redundant MEP Systems | 8d | 2026-09-09 | 2026-09-18 | 104SS+2d | 2d |
| 106 |  | Load, Haul & Legally Dispose of Demolition Debris | 10d | 2026-09-09 | 2026-09-22 | 104SS+2d |  |
| 107 |  | Post-Demolition Walk & Existing Conditions Verification - Owner / A/E / Triun | 1d | 2026-09-23 | 2026-09-23 | 104, 105, 106 |  |
| 108 | 1.2.3 | **Concrete, Underground & Structural Modifications (Divisions 03, 04, 05, 31)** | 33d | 2026-09-24 | 2026-11-09 |  | 24d |
| 109 |  | Sawcut Slab & Trench for New Underground Utilities | 3d | 2026-09-24 | 2026-09-28 | 107 | 24d |
| 110 |  | Underground Plumbing - Waste & Vent Rough-In (Division 22) | 5d | 2026-09-29 | 2026-10-05 | 109, 59 | 24d |
| 111 |  | Underground Plumbing Inspection (AHJ) - Hold Point Before Backfill | 1d | 2026-10-06 | 2026-10-06 | 110 | 24d |
| 112 |  | Backfill, Compact & Density Test Trenches | 2d | 2026-10-07 | 2026-10-08 | 111 | 24d |
| 113 |  | Slab Infill Pours - 4,000 PSI w/ Doweled Edges (Division 03) | 2d | 2026-10-09 | 2026-10-12 | 112, 84 | 24d |
| 114 |  | Concrete Field Testing (Slump, Air, Cylinders) | 2d | 2026-10-09 | 2026-10-12 | 113FF | 71d |
| 115 |  | Housekeeping Pads - Mechanical & Electrical Rooms | 2d | 2026-10-13 | 2026-10-14 | 113 | 24d |
| 116 |  | 28-Day Cylinder Breaks & Strength Verification | 1d | 2026-11-09 | 2026-11-09 | 113FS+19d | 51d |
| 117 |  | CMU Infill & Masonry Patching at Modified Openings (Division 04) | 3d | 2026-09-24 | 2026-09-28 | 107, 89 | 24d |
| 118 |  | Miscellaneous Steel - Lintels, Equipment Supports & RTU Frames (Division 05) | 10d | 2026-09-24 | 2026-10-07 | 107, 54 | 50d |
| 119 |  | Roof Modifications - Curbs, Openings & Patching (Division 07) | 5d | 2026-10-01 | 2026-10-07 | 118SS+5d, 79 | 50d |
| 120 | 1.2.4 | **Interior Framing & MEP Rough-In (Divisions 09, 22, 23, 26, 27, 28)** | 32d | 2026-09-24 | 2026-11-06 |  |  |
| 121 |  | Metal Stud Framing - Interior Partitions & Furr-Outs (Division 09) | 15d | 2026-09-24 | 2026-10-14 | 107, 101 |  |
| 122 |  | Set Hollow Metal Door Frames in Partitions (Division 08) | 3d | 2026-10-01 | 2026-10-05 | 121SS+5d, 24 | 19d |
| 123 |  | HVAC Overhead Ductwork - Mains & Branches (Division 23) | 20d | 2026-09-29 | 2026-10-26 | 121SS+3d | 2d |
| 124 |  | Mechanical Piping - Refrigerant, Condensate & Hydronic (Division 23) | 12d | 2026-10-06 | 2026-10-21 | 123SS+5d | 41d |
| 125 |  | Plumbing Overhead & In-Wall Rough-In (Division 22) | 15d | 2026-10-01 | 2026-10-21 | 121SS+5d | 7d |
| 126 |  | Electrical Conduit & Boxes - Overhead & In-Wall Rough-In (Division 26) | 20d | 2026-10-01 | 2026-10-28 | 121SS+5d |  |
| 127 |  | Communications Pathways - Cable Tray, Conduit & Sleeves (Division 27) | 10d | 2026-10-08 | 2026-10-21 | 126SS+5d | 31d |
| 128 |  | Fire Alarm & Security Rough-In (Division 28) | 10d | 2026-10-13 | 2026-10-26 | 126SS+8d | 4d |
| 129 |  | In-Wall Blocking & Backing (Division 06) | 5d | 2026-10-06 | 2026-10-12 | 121SS+8d | 14d |
| 130 |  | Set Electrical Distribution Gear, Panelboards & Transformers (Division 26) | 5d | 2026-10-15 | 2026-10-21 | 115, 19, 99 | 24d |
| 131 |  | Pull Wire & Make Up - Feeders & Branch Circuits (Division 26) | 12d | 2026-10-22 | 2026-11-06 | 126SS+8d, 130 | 24d |
| 132 |  | Set HVAC Equipment - AHUs/RTUs (Crane Day) (Division 23) | 3d | 2026-10-12 | 2026-10-14 | 119, 118, 14 | 48d |
| 133 |  | Set VAV / Fan-Powered Boxes & In-Duct Devices (Division 23) | 5d | 2026-10-12 | 2026-10-16 | 123SS+8d, 14 | 41d |
| 134 |  | Ductwork & Piping Insulation (Divisions 07/23) | 8d | 2026-10-14 | 2026-10-23 | 123SS+10d, 124SS+6d | 41d |
| 135 |  | Firestopping & Fire/Smoke Sealants at Rated Penetrations (Division 07) | 5d | 2026-10-26 | 2026-10-30 | 123FF+2d, 126FF+2d |  |
| 136 |  | AHJ Rough Inspections - Frame, Mechanical, Electrical & Plumbing (Hold Point) | 2d | 2026-11-02 | 2026-11-03 | 121, 122, 123, 125, 126, 129, 128, 135, 117 |  |
| 137 |  | MEP & Framing Rough-In Complete - Ready for Cover | 0d | 2026-11-03 | 2026-11-03 | 136 |  |
| 138 | 1.2.5 | **Insulation, Drywall & Ceilings (Divisions 07, 09)** | 38d | 2026-11-04 | 2026-12-31 |  |  |
| 139 |  | Wall & Sound Batt Insulation (Division 07) | 5d | 2026-11-04 | 2026-11-10 | 137 |  |
| 140 |  | Insulation Inspection (AHJ) | 1d | 2026-11-11 | 2026-11-11 | 139 |  |

| ID | WBS | Task | Duration | Start | Finish | Predecessors | Total float |
| --- | --- | --- | --- | --- | --- | --- | --- |
| 141 |  | Hang Gypsum Board (Division 09) | 12d | 2026-11-12 | 2026-12-01 | 140 |  |
| 142 |  | Tape, Float & Sand - Level 4 Finish (Division 09) | 10d | 2026-11-18 | 2026-12-03 | 141SS+4d |  |
| 143 |  | Prime & First Coat Paint (Division 09) | 4d | 2026-12-04 | 2026-12-09 | 142 |  |
| 144 |  | Acoustical Ceiling Grid (Division 09) | 8d | 2026-12-10 | 2026-12-21 | 143 |  |
| 145 |  | Install Light Fixtures & Lighting Controls in Grid (Division 26) | 8d | 2026-12-14 | 2026-12-23 | 144SS+2d, 29 |  |
| 146 |  | Install HVAC Grilles, Registers & Flex Connections (Division 23) | 5d | 2026-12-15 | 2026-12-21 | 144SS+3d | 2d |
| 147 |  | Pull & Terminate Structured Cabling (Division 27) | 12d | 2026-11-20 | 2026-12-09 | 127, 141SS+6d, 74 | 10d |
| 148 |  | AHJ Above-Ceiling / Close-In Inspection (Hold Point) | 1d | 2026-12-28 | 2026-12-28 | 145, 146, 134, 135, 147 |  |
| 149 |  | Drop Acoustical Ceiling Tile (Division 09) | 3d | 2026-12-29 | 2026-12-31 | 148 |  |
| 150 | 1.2.6 | **Interior Finishes (Divisions 06, 08, 09, 10, 11, 12)** | 26d | 2026-12-04 | 2027-01-13 |  |  |
| 151 |  | Ceramic Tile - Restroom Floors & Walls (Division 09) | 8d | 2026-12-08 | 2026-12-17 | 142FS+2d, 64 | 8d |
| 152 |  | Aluminum Storefront & Interior Glazing (Division 08) | 8d | 2026-12-04 | 2026-12-15 | 142, 34 | 18d |
| 153 |  | Install Millwork, Casework & Wall Paneling (Division 06) | 8d | 2026-12-10 | 2026-12-21 | 143, 39 | 11d |
| 154 |  | Solid Surface Countertops - Field Measure & Install (Division 06) | 3d | 2026-12-22 | 2026-12-28 | 153 | 11d |
| 155 |  | Finish Paint & Final Coats (Division 09) | 8d | 2026-12-22 | 2027-01-05 | 144 |  |
| 156 |  | Flooring - LVT, Carpet Tile & Resilient Base (Division 09) | 10d | 2026-12-30 | 2027-01-13 | 155SS+4d, 64 |  |
| 157 |  | Joint Sealants & Final Caulking (Division 07) | 3d | 2026-12-30 | 2027-01-04 | 155SS+4d | 7d |
| 158 |  | Hang Doors, Install Hardware & Keying (Division 08) | 8d | 2026-12-30 | 2027-01-11 | 155SS+4d, 24, 122 | 2d |
| 159 |  | Toilet Partitions, Accessories & Specialties (Division 10) | 4d | 2027-01-04 | 2027-01-07 | 151, 155SS+6d, 69 | 4d |
| 160 |  | Interior Signage & Wayfinding (Division 10) | 2d | 2027-01-06 | 2027-01-07 | 155, 69 | 4d |
| 161 |  | Fire Extinguishers & Cabinets (Division 10) | 1d | 2027-01-06 | 2027-01-06 | 155 | 5d |
| 162 |  | Install Equipment (Division 11) | 2d | 2027-01-12 | 2027-01-13 | 156FF |  |
| 163 |  | Window Treatments & Furnishings (Division 12) | 3d | 2027-01-11 | 2027-01-13 | 156SS+7d, 69 |  |
| 164 |  | Exterior Improvements - Site Repairs at Entries (Division 32) | 5d | 2026-12-30 | 2027-01-06 | 156SS | 5d |
| 165 | 1.2.7 | **MEP Trim & Low-Voltage Systems (Divisions 22, 26, 27, 28)** | 20d | 2026-12-10 | 2027-01-11 |  | 11d |
| 166 |  | Plumbing Fixtures, Trim & Water Heaters (Division 22) | 8d | 2026-12-18 | 2026-12-31 | 151, 59 | 8d |
| 167 |  | Electrical Devices, Cover Plates & Panel Terminations (Division 26) | 8d | 2026-12-28 | 2027-01-07 | 155SS+2d, 131 | 4d |
| 168 |  | Test, Certify & Label Structured Cabling (Division 27) | 3d | 2026-12-10 | 2026-12-14 | 147 | 28d |
| 169 |  | Install Security Devices, Access Control & Cameras (Division 28) | 10d | 2026-12-28 | 2027-01-11 | 128, 155SS+2d, 49 | 9d |
| 170 |  | Fire Alarm Devices & Notification Appliances (Division 28) | 6d | 2026-12-29 | 2027-01-06 | 128, 149SS, 49 | 3d |
| 171 | 1.2.8 | **Startup, Testing & Commissioning** | 46d | 2026-11-09 | 2027-01-18 |  | 4d |
| 172 |  | Permanent Power Energization & Switchover | 2d | 2026-11-09 | 2026-11-10 | 130, 131 | 24d |
| 173 |  | BAS Controls - Point-to-Point & Programming (Divisions 23/25) | 10d | 2026-11-11 | 2026-11-24 | 44, 133, 172 | 24d |
| 174 |  | HVAC Equipment Startup & Refrigerant Charge | 4d | 2026-11-18 | 2026-11-23 | 172, 132, 133, 124, 173SS+5d | 24d |
| 175 |  | Test, Adjust & Balance (TAB) w/ Report | 8d | 2027-01-04 | 2027-01-13 | 174, 146, 149 |  |
| 176 |  | Fire Alarm Pre-Test & AHJ Acceptance Test (Hold Point) | 2d | 2027-01-07 | 2027-01-08 | 170, 173 | 3d |
| 177 |  | Life Safety Demonstration - Egress, Emergency Lighting & Signage | 1d | 2027-01-11 | 2027-01-11 | 176, 145 | 5d |
| 178 |  | Functional Performance Testing / Commissioning | 5d | 2027-01-08 | 2027-01-14 | 175SS+4d, 173 | 6d |
| 179 |  | AHJ Final Inspections - Building, Mechanical, Electrical & Plumbing | 3d | 2027-01-14 | 2027-01-18 | 176, 175, 158, 166, 167, 159, 161, 160 |  |
| 180 |  | Certificate of Occupancy Issued | 0d | 2027-01-18 | 2027-01-18 | 179, 177 |  |
| 181 |  | Field Supervision & General Conditions - Division 01 (Level of Effort) | 105d | 2026-08-26 | 2027-01-27 | 98SS | 1d |
| 182 | 1.3 | **Closeout** | 11d | 2027-01-14 | 2027-01-28 |  |  |
| 183 |  | Final Cleaning | 3d | 2027-01-14 | 2027-01-18 | 156, 158, 159, 163, 157, 152, 154, 164, 162 |  |
| 184 |  | Punch Walk - Owner / A/E / Triun | 1d | 2027-01-19 | 2027-01-19 | 183, 180, 196, 200, 204 |  |
| 185 |  | Punch List Completion | 5d | 2027-01-20 | 2027-01-26 | 184 |  |
| 186 |  | As-Built Drawings & Record Documents | 5d | 2027-01-19 | 2027-01-25 | 184SS | 1d |
| 187 |  | O&M Manuals, Warranties & Attic Stock | 5d | 2027-01-19 | 2027-01-25 | 184SS | 1d |
| 188 |  | Owner Training - HVAC, Controls, Fire Alarm & Security | 2d | 2027-01-20 | 2027-01-21 | 178, 184, 169 | 3d |
| 189 |  | Substantial Completion | 1d | 2027-01-26 | 2027-01-26 | 185FF, 180 |  |
| 190 |  | Final Inspection & Final Payment Application | 2d | 2027-01-27 | 2027-01-28 | 189, 186, 187, 188, 116, 168, 114 |  |
| 191 |  | Final Completion | 0d | 2027-01-28 | 2027-01-28 | 190 |  |
| 192 | 1.4 | **Alternates Breakout (Exhibit C - If Awarded)** | 88d | 2026-08-07 | 2026-12-11 |  | 23d |
| 193 | 1.4.1 | **Alternate No. 1 (Exhibit C)** | 80d | 2026-08-07 | 2026-12-01 |  | 31d |
| 194 |  | Alternate No. 1 - Submittals & Procurement | 15d | 2026-08-07 | 2026-08-27 | 4FS+2d | 84d |
| 195 |  | Alternate No. 1 - Construction Work | 12d | 2026-11-12 | 2026-12-01 | 194, 141SS | 31d |
| 196 |  | Alternate No. 1 Complete | 0d | 2026-12-01 | 2026-12-01 | 195 | 31d |
| 197 | 1.4.2 | **Alternate No. 2 (Exhibit C)** | 83d | 2026-08-07 | 2026-12-04 |  | 28d |
| 198 |  | Alternate No. 2 - Submittals & Procurement | 15d | 2026-08-07 | 2026-08-27 | 4FS+2d | 86d |
| 199 |  | Alternate No. 2 - Construction Work | 10d | 2026-11-19 | 2026-12-04 | 198, 141SS+5d | 28d |
| 200 |  | Alternate No. 2 Complete | 0d | 2026-12-04 | 2026-12-04 | 199 | 28d |
| 201 | 1.4.3 | **Alternate No. 3 (Exhibit C)** | 88d | 2026-08-07 | 2026-12-11 |  | 23d |
| 202 |  | Alternate No. 3 - Submittals & Procurement | 20d | 2026-08-07 | 2026-09-03 | 4FS+2d | 71d |
| 203 |  | Alternate No. 3 - Construction Work | 20d | 2026-11-12 | 2026-12-11 | 202, 141SS | 23d |
| 204 |  | Alternate No. 3 Complete | 0d | 2026-12-11 | 2026-12-11 | 203 | 23d |

## Version 2 (saved 2026-07-24)

Note of the change: Apply adversarial review fixes to Babcock schedule

Last finish stays 2027-01-28.

Changed:

| ID | Task | Start | Finish | Total float | Predecessors | Other |
| --- | --- | --- | --- | --- | --- | --- |
| 102 | **Selective Demolition** |  |  |  |  | was named Selective Demolition (Division 02 - Existing Conditions) |
| 108 | **Concrete, Underground & Structural Modifications** |  |  | 24d → none |  | was named Concrete, Underground & Structural Modifications (Divisions 03, 04, 05, 31) |
| 120 | **Interior Framing & MEP Rough-In** |  |  |  |  | was named Interior Framing & MEP Rough-In (Divisions 09, 22, 23, 26, 27, 28) |
| 121 | Metal Stud Framing - Interior Partitions & Furr-Outs (Division 09) |  |  |  | 107, 101 → 107, 101, 113FF+2d |  |
| 138 | **Insulation, Drywall & Ceilings** |  |  |  |  | was named Insulation, Drywall & Ceilings (Divisions 07, 09) |
| 150 | **Interior Finishes** |  |  |  |  | was named Interior Finishes (Divisions 06, 08, 09, 10, 11, 12) |
| 165 | **MEP Trim & Low-Voltage Systems** |  |  | 11d → 10d |  | was named MEP Trim & Low-Voltage Systems (Divisions 22, 26, 27, 28) |
| 172 | Permanent Power Energization & Switchover |  |  |  | 130, 131 → 130, 131, 136 |  |
| 176 | Fire Alarm Pre-Test & AHJ Acceptance Test (Hold Point) | 2027-01-07 → 2027-01-12 (+5d) | 2027-01-08 → 2027-01-13 (+5d) | 3d → none | 170, 173 → 170, 173, 158, 169 |  |
| 177 | Life Safety Demonstration - Egress, Emergency Lighting & Signage | 2027-01-11 → 2027-01-14 (+3d) | 2027-01-11 → 2027-01-14 (+3d) | 5d → 2d |  |  |
